Schedule from MS Project, 2020-03-02 to 2020-08-17, costs in ₽.

## Calendars

- Стандартный: Mon-Fri 09:00-13:00, 14:00-18:00; Sat-Sun off. Exceptions (off unless hours are given): 2020-03-07 to 2020-03-09 (Международный женский день), 2020-04-30 09:00-13:00, 14:00-17:00 (Продолжительность работы сокращается на 1 час), 2020-05-01 to 2020-05-03 (Праздник Весны и Труда), 2020-05-04 to 2020-05-05 (Перенос с новогодних каникул), 2020-05-09 to 2020-05-11 (День Победы), 2020-06-12 to 2020-06-14 (День России).

## Resources

| Resource | Group | Rate | Cost per use |
| --- | --- | --- | --- |
| Ведущий программист | Программирование | 10 | 100 |
| Программист#1 | Программирование | 7 | 50 |
| Программист#2 | Программирование | 7 | 50 |
| Программист#3 | Программирование | 7 | 50 |
| Программист#4 | Программирование | 7 | 50 |
| Системный аналитик | Анализ | 20 | 300 |
| Художник-дизайнер | Дизайн | 8 | 70 |
| Технический писатель | Документация | 5 | 20 |
| Web-дизайнер | Internet | 7 | 50 |
| 3D аниматор | Дизайн | 8 | 70 |
| Мультимедиа-корреспондент | М-медиа | 3 | 20 |
| Наборщик данных#1 | Ввод данных | 2 | 10 |
| Наборщик данных#2 | Ввод данных | 2 | 10 |
| Наборщик данных#3 | Ввод данных | 2 | 10 |
| Наборщик данных#4 | Ввод данных | 2 | 10 |
| Наборщик данных#5 | Ввод данных | 2 | 10 |
| Дополнительный сервер |  | 2 |  |

## Schedule

| ID | WBS | Task | Type | Duration | Start | Finish | Predecessors | Baseline start | Baseline finish | Baseline duration | Total slack | Free slack | Resources | Work | Cost | Baseline cost |
| --- | --- | --- | --- | --- | --- | --- | --- | --- | --- | --- | --- | --- | --- | --- | --- | --- |
| 1 | 1 | **Проект ЛР1** |  | 114.74d | 2020-03-02 09:00 | 2020-08-17 16:55 |  | 2020-03-02 09:00 | 2020-08-10 16:55 | 109.74d | 0d |  |  | 9623h | 49,819.87 | 49,539.86 |
| 2 | 1.1 | Начало проекта | milestone | 0d | 2020-03-02 09:00 | 2020-03-02 09:00 |  | 2020-03-02 09:00 | 2020-03-02 09:00 | 0d | 51.74d | 0d |  |  |  |  |
| 3 | 1.2 | **Создание интерфейса** |  | 83.49d | 2020-03-02 09:00 | 2020-07-03 14:55 | 2 | 2020-03-02 09:00 | 2020-06-26 14:55 | 78.49d | 0d |  |  | 560h | 5,894 | 5,894 |
| 4 | 1.2.1 | **Разработка дизайна интерфейса** |  | 25.62d | 2020-03-02 09:00 | 2020-04-07 15:00 |  | 2020-03-02 09:00 | 2020-04-07 15:00 | 25.62d | 51.74d | 0d |  | 320h | 2,770 | 2,770 |
| 5 | 1.2.1.1 | Разработка 2D графических элементов |  | 3w | 2020-03-02 09:00 | 2020-03-24 12:00 |  | 2020-03-02 09:00 | 2020-03-24 12:00 | 3w | 51.74d | 0d | Художник-дизайнер | 120h | 1,030 | 1,030 |
| 6 | 1.2.1.2 | Разработка 3D графических элементов |  | 2w | 2020-03-02 09:00 | 2020-03-17 11:00 | 5SS | 2020-03-02 09:00 | 2020-03-17 11:00 | 2w | 51.74d | 0d | 3D аниматор | 80h | 710 | 710 |
| 7 | 1.2.1.3 | Создание заставки |  | 3w | 2020-03-17 11:00 | 2020-04-07 15:00 | 6 | 2020-03-17 11:00 | 2020-04-07 15:00 | 3w | 51.74d |  | 3D аниматор | 120h | 1,030 | 1,030 |
| 8 | 1.2.2 | Программирование интерфейса |  | 1.23w | 2020-06-25 12:55 | 2020-07-03 14:55 | 4, 13 | 2020-06-18 12:55 | 2020-06-26 14:55 | 1.23w | 0d |  | Программист#3; Программист#4; Ведущий программист; Программист#1; Программист#2 | 240h | 2,124 | 2,124 |
| 9 | 1.3 | **Построение базы объектов** |  | 86.5d | 2020-03-24 12:00 | 2020-07-29 18:00 |  | 2020-03-24 12:00 | 2020-07-29 18:00 | 86.5d | 12.86d |  | Дополнительный сервер | 5774h | 15,638 | 15,638 |
| 10 | 1.3.1 | Анализ и построение структуры базы объектов |  | 2w | 2020-03-24 12:00 | 2020-04-07 15:00 |  | 2020-03-24 12:00 | 2020-04-07 15:00 | 2w | 12.86d | 0d | Системный аналитик | 80h | 1,900 | 1,900 |
| 11 | 1.3.2 | Программирование средств обработки объектов |  | 3w | 2020-04-07 15:00 | 2020-04-29 17:00 | 10 | 2020-04-07 15:00 | 2020-04-29 17:00 | 3w | 12.86d | 0d | Программист#3; Программист#4 | 240h | 1,780 | 1,780 |
| 12 | 1.3.3 | Наполнение базы объектов |  | 12w | 2020-04-29 17:00 | 2020-07-29 18:00 | 11 | 2020-04-29 17:00 | 2020-07-29 18:00 | 12w | 12.86d |  | Наборщик данных#1; Наборщик данных#2; Наборщик данных#3; Наборщик данных#4; Наборщик данных#5 | 2400h | 4,850 | 4,850 |
| 13 | 1.4 | **Создание ядра GIS** |  | 77.36d | 2020-03-02 09:00 | 2020-06-25 12:55 |  | 2020-03-02 09:00 | 2020-06-18 12:55 | 72.36d | 0d |  |  | 1920h | 18,568.88 | 18,288.86 |
| 14 | 1.4.1 | Анализ и проектирование ядра |  | 3w | 2020-03-02 09:00 | 2020-03-24 12:00 |  | 2020-03-02 09:00 | 2020-03-24 12:00 | 3w | 0d |  | Системный аналитик; Ведущий программист | 240h | 4,000 | 4,000 |
| 15 | 1.4.2 | Создание модели ядра |  | 3.41w | 2020-03-24 12:00 | 2020-04-16 12:13 | 14 | 2020-03-24 12:00 | 2020-04-16 12:13 | 3.41w | 0d |  | Ведущий программист; Программист#1; Программист#2 | 400h | 3,396.7 | 3,396.7 |
| 16 | 1.4.3 | Тестирование модели ядра |  | 0.25w | 2020-04-16 12:13 | 2020-04-17 15:13 | 15 | 2020-04-16 12:13 | 2020-04-17 15:13 | 0.25w | 0d |  | Программист#1; Программист#2; Программист#3; Программист#4 | 40h | 480 | 480 |
| 17 | 1.4.4 | Создание рабочей версии ядра |  | 8.74w | 2020-04-17 15:13 | 2020-06-25 12:55 | 16 | 2020-04-17 15:13 | 2020-06-18 12:55 | 7.74w | 0d |  | Ведущий программист; Программист#1; Программист#2; Программист#3; Программист#4 | 1240h | 9,692.18 | 9,412.16 |
| 18 | 1.5 | Создание мультимедиа-наполнения |  | 6w | 2020-04-07 15:00 | 2020-05-26 15:00 | 4 | 2020-04-07 15:00 | 2020-05-26 15:00 | 6w | 58.24d |  | Мультимедиа-корреспондент | 240h | 740 | 740 |
| 19 | 1.6 | Создание справочной системы |  | 2w | 2020-07-14 17:55 | 2020-07-29 10:55 | 8 | 2020-07-07 17:55 | 2020-07-22 10:55 | 2w | 13.62d |  | Технический писатель | 80h | 420 | 420 |
| 20 | 1.7 | **Создание руководства пользователя** |  | 17.38d | 2020-06-19 14:55 | 2020-07-14 17:55 | 8FS-10d | 2020-06-11 14:55 | 2020-07-07 17:55 | 17.38d | 0d |  |  | 160h | 1,010 | 1,010 |
| 21 | 1.7.1 | Разработка дизайна руководства |  | 1w | 2020-06-19 14:55 | 2020-06-26 15:55 |  | 2020-06-11 14:55 | 2020-06-19 15:55 | 1w | 0d |  | Художник-дизайнер | 40h | 390 | 390 |
| 22 | 1.7.2 | Написание руководства пользователя |  | 3w | 2020-06-23 14:55 | 2020-07-14 17:55 | 21SS+2d | 2020-06-16 14:55 | 2020-07-07 17:55 | 3w | 0d |  | Технический писатель | 120h | 620 | 620 |
| 23 | 1.8 | **Создание web-сайта и поддержка** |  | 23.75d | 2020-06-23 14:55 | 2020-07-27 11:55 |  | 2020-06-16 14:55 | 2020-07-20 11:55 | 23.75d | 0d |  |  | 248h | 2,106 | 2,106 |
| 24 | 1.8.1 | Разработка структуры сайта |  | 1d | 2020-06-23 14:55 | 2020-06-24 15:55 | 22SS | 2020-06-16 14:55 | 2020-06-17 15:55 | 1d | 0d |  | Web-дизайнер | 8h | 106 | 106 |
| 25 | 1.8.2 | Разработка дизайна сайта |  | 1.45w | 2020-06-24 15:55 | 2020-07-03 17:55 | 24 | 2020-06-17 15:55 | 2020-06-26 17:55 | 1.45w | 0d |  | Web-дизайнер; Художник-дизайнер; 3D аниматор | 120h | 1,110 | 1,110 |
| 26 | 1.8.3 | Наполнение сайта |  | 3w | 2020-07-03 17:55 | 2020-07-27 11:55 | 25 | 2020-06-26 17:55 | 2020-07-20 11:55 | 3w | 0d |  | Web-дизайнер | 120h | 890 | 890 |
| 27 | 1.9 | Тестирование сайта |  | 4.1w | 2020-07-20 11:55 | 2020-08-17 16:55 | 23FS-1w | 2020-07-13 11:55 | 2020-08-10 16:55 | 4.1w | 0d |  | Ведущий программист; Программист#1; Программист#2 | 480h | 4,040 | 4,040 |

Notes:
- 1: Команда разработчиков из 16 человек занимается созданием карты города на основе собственного модуля отображения. Проект должен быть завершён в течение 6 месяцев. Бюджет проекта 50000 рублей.

| ID | WBS | Task | Duration | Start | Finish | Predecessors | Baseline start | Baseline finish | Baseline duration | Total slack | Constraint | Resources | Work | Cost | Baseline cost |
| --- | --- | --- | --- | --- | --- | --- | --- | --- | --- | --- | --- | --- | --- | --- | --- |
| 28 | 1.10 | **Сдача сайта в эксплуатацию** | 0d | 2020-08-17 16:55 | 2020-08-17 16:55 | 27 | 2020-08-10 16:55 | 2020-08-10 16:55 | 0d | 0d |  |  |  |  |  |
| 30 | 1.10.1 | 1 | 1h | 2020-03-04 09:00 | 2020-03-04 10:00 |  | 2020-03-04 09:00 | 2020-03-04 10:00 | 1h | 112.61d | start no earlier than 2020-03-04 09:00 | 3D аниматор; Web-дизайнер; Ведущий программист; Мультимедиа-корреспондент; Системный аналитик; Технический писатель; Художник-дизайнер | 7h | 61 | 61 |
| 31 | 1.10.2 | 2 | 1h | 2020-03-11 09:00 | 2020-03-11 10:00 |  | 2020-03-11 09:00 | 2020-03-11 10:00 | 1h | 108.61d | start no earlier than 2020-03-11 09:00 | 3D аниматор; Web-дизайнер; Ведущий программист; Мультимедиа-корреспондент; Системный аналитик; Технический писатель; Художник-дизайнер | 7h | 61 | 61 |
| 32 | 1.10.3 | 3 | 1h | 2020-03-18 09:00 | 2020-03-18 10:00 |  | 2020-03-18 09:00 | 2020-03-18 10:00 | 1h | 103.61d | start no earlier than 2020-03-18 09:00 | 3D аниматор; Web-дизайнер; Ведущий программист; Мультимедиа-корреспондент; Системный аналитик; Технический писатель; Художник-дизайнер | 7h | 61 | 61 |
| 33 | 1.10.4 | 4 | 1h | 2020-03-25 09:00 | 2020-03-25 10:00 |  | 2020-03-25 09:00 | 2020-03-25 10:00 | 1h | 98.61d | start no earlier than 2020-03-25 09:00 | 3D аниматор; Web-дизайнер; Ведущий программист; Мультимедиа-корреспондент; Системный аналитик; Технический писатель; Художник-дизайнер | 7h | 61 | 61 |
| 34 | 1.10.5 | 5 | 1h | 2020-04-01 09:00 | 2020-04-01 10:00 |  | 2020-04-01 09:00 | 2020-04-01 10:00 | 1h | 93.61d | start no earlier than 2020-04-01 09:00 | 3D аниматор; Web-дизайнер; Ведущий программист; Мультимедиа-корреспондент; Системный аналитик; Технический писатель; Художник-дизайнер | 7h | 61 | 61 |
| 35 | 1.10.6 | 6 | 1h | 2020-04-08 09:00 | 2020-04-08 10:00 |  | 2020-04-08 09:00 | 2020-04-08 10:00 | 1h | 88.61d | start no earlier than 2020-04-08 09:00 | 3D аниматор; Web-дизайнер; Ведущий программист; Мультимедиа-корреспондент; Системный аналитик; Технический писатель; Художник-дизайнер | 7h | 61 | 61 |
| 36 | 1.10.7 | 7 | 1h | 2020-04-15 09:00 | 2020-04-15 10:00 |  | 2020-04-15 09:00 | 2020-04-15 10:00 | 1h | 83.61d | start no earlier than 2020-04-15 09:00 | 3D аниматор; Web-дизайнер; Ведущий программист; Мультимедиа-корреспондент; Системный аналитик; Технический писатель; Художник-дизайнер | 7h | 61 | 61 |
| 37 | 1.10.8 | 8 | 1h | 2020-04-22 09:00 | 2020-04-22 10:00 |  | 2020-04-22 09:00 | 2020-04-22 10:00 | 1h | 78.61d | start no earlier than 2020-04-22 09:00 | 3D аниматор; Web-дизайнер; Ведущий программист; Мультимедиа-корреспондент; Системный аналитик; Технический писатель; Художник-дизайнер | 7h | 61 | 61 |
| 38 | 1.10.9 | 9 | 1h | 2020-04-29 09:00 | 2020-04-29 10:00 |  | 2020-04-29 09:00 | 2020-04-29 10:00 | 1h | 73.61d | start no earlier than 2020-04-29 09:00 | 3D аниматор; Web-дизайнер; Ведущий программист; Мультимедиа-корреспондент; Системный аналитик; Технический писатель; Художник-дизайнер | 7h | 61 | 61 |
| 39 | 1.10.10 | 10 | 1h | 2020-05-06 09:00 | 2020-05-06 10:00 |  | 2020-05-06 09:00 | 2020-05-06 10:00 | 1h | 71.74d | start no earlier than 2020-05-06 09:00 | 3D аниматор; Web-дизайнер; Ведущий программист; Мультимедиа-корреспондент; Системный аналитик; Технический писатель; Художник-дизайнер | 7h | 61 | 61 |
| 40 | 1.10.11 | 11 | 1h | 2020-05-13 09:00 | 2020-05-13 10:00 |  | 2020-05-13 09:00 | 2020-05-13 10:00 | 1h | 67.74d | start no earlier than 2020-05-13 09:00 | 3D аниматор; Web-дизайнер; Ведущий программист; Мультимедиа-корреспондент; Системный аналитик; Технический писатель; Художник-дизайнер | 7h | 61 | 61 |
| 41 | 1.10.12 | 12 | 1h | 2020-05-20 09:00 | 2020-05-20 10:00 |  | 2020-05-20 09:00 | 2020-05-20 10:00 | 1h | 62.74d | start no earlier than 2020-05-20 09:00 | 3D аниматор; Web-дизайнер; Ведущий программист; Мультимедиа-корреспондент; Системный аналитик; Технический писатель; Художник-дизайнер | 7h | 61 | 61 |
| 42 | 1.10.13 | 13 | 1h | 2020-05-27 09:00 | 2020-05-27 10:00 |  | 2020-05-27 09:00 | 2020-05-27 10:00 | 1h | 57.74d | start no earlier than 2020-05-27 09:00 | 3D аниматор; Web-дизайнер; Ведущий программист; Мультимедиа-корреспондент; Системный аналитик; Технический писатель; Художник-дизайнер | 7h | 61 | 61 |
| 43 | 1.10.14 | 14 | 1h | 2020-06-03 09:00 | 2020-06-03 10:00 |  | 2020-06-03 09:00 | 2020-06-03 10:00 | 1h | 52.74d | start no earlier than 2020-06-03 09:00 | 3D аниматор; Web-дизайнер; Ведущий программист; Мультимедиа-корреспондент; Системный аналитик; Технический писатель; Художник-дизайнер | 7h | 61 | 61 |
| 44 | 1.10.15 | 15 | 1h | 2020-06-10 09:00 | 2020-06-10 10:00 |  | 2020-06-10 09:00 | 2020-06-10 10:00 | 1h | 47.74d | start no earlier than 2020-06-10 09:00 | 3D аниматор; Web-дизайнер; Ведущий программист; Мультимедиа-корреспондент; Системный аналитик; Технический писатель; Художник-дизайнер | 7h | 61 | 61 |
| 45 | 1.10.16 | 16 | 1h | 2020-06-17 09:00 | 2020-06-17 10:00 |  | 2020-06-17 09:00 | 2020-06-17 10:00 | 1h | 43.74d | start no earlier than 2020-06-17 09:00 | 3D аниматор; Web-дизайнер; Ведущий программист; Мультимедиа-корреспондент; Системный аналитик; Технический писатель; Художник-дизайнер | 7h | 61 | 61 |
| 46 | 1.10.17 | 17 | 1h | 2020-06-24 09:00 | 2020-06-24 10:00 |  | 2020-06-24 09:00 | 2020-06-24 10:00 | 1h | 38.74d | start no earlier than 2020-06-24 09:00 | 3D аниматор; Web-дизайнер; Ведущий программист; Мультимедиа-корреспондент; Системный аналитик; Технический писатель; Художник-дизайнер | 7h | 61 | 61 |
| 47 | 1.10.18 | 18 | 1h | 2020-07-01 09:00 | 2020-07-01 10:00 |  | 2020-07-01 09:00 | 2020-07-01 10:00 | 1h | 33.74d | start no earlier than 2020-07-01 09:00 | 3D аниматор; Web-дизайнер; Ведущий программист; Мультимедиа-корреспондент; Системный аналитик; Технический писатель; Художник-дизайнер | 7h | 61 | 61 |
| 48 | 1.10.19 | 19 | 1h | 2020-07-08 09:00 | 2020-07-08 10:00 |  | 2020-07-08 09:00 | 2020-07-08 10:00 | 1h | 28.74d | start no earlier than 2020-07-08 09:00 | 3D аниматор; Web-дизайнер; Ведущий программист; Мультимедиа-корреспондент; Системный аналитик; Технический писатель; Художник-дизайнер | 7h | 61 | 61 |
| 49 | 1.10.20 | 20 | 1h | 2020-07-15 09:00 | 2020-07-15 10:00 |  | 2020-07-15 09:00 | 2020-07-15 10:00 | 1h | 23.74d | start no earlier than 2020-07-15 09:00 | 3D аниматор; Web-дизайнер; Ведущий программист; Мультимедиа-корреспондент; Системный аналитик; Технический писатель; Художник-дизайнер | 7h | 61 | 61 |
| 50 | 1.10.21 | 21 | 1h | 2020-07-22 09:00 | 2020-07-22 10:00 |  | 2020-07-22 09:00 | 2020-07-22 10:00 | 1h | 18.74d | start no earlier than 2020-07-22 09:00 | 3D аниматор; Web-дизайнер; Ведущий программист; Мультимедиа-корреспондент; Системный аналитик; Технический писатель; Художник-дизайнер | 7h | 61 | 61 |
| 51 | 1.10.22 | 22 | 1h | 2020-07-29 09:00 | 2020-07-29 10:00 |  | 2020-07-29 09:00 | 2020-07-29 10:00 | 1h | 13.74d | start no earlier than 2020-07-29 09:00 | 3D аниматор; Web-дизайнер; Ведущий программист; Мультимедиа-корреспондент; Системный аналитик; Технический писатель; Художник-дизайнер | 7h | 61 | 61 |
| 52 | 1.10.23 | 23 | 1h | 2020-08-05 09:00 | 2020-08-05 10:00 |  | 2020-08-05 09:00 | 2020-08-05 10:00 | 1h | 8.74d | start no earlier than 2020-08-05 09:00 | 3D аниматор; Web-дизайнер; Ведущий программист; Мультимедиа-корреспондент; Системный аналитик; Технический писатель; Художник-дизайнер | 7h | 61 | 61 |
