Schedule from MS Project, 2020-03-02 to 2020-09-09, status date 2020-04-30, costs in ₽, A marks actual dates.

## Calendars

- Стандартный: Mon-Fri 09:00-13:00, 14:00-18:00; Sat-Sun off. Exceptions (off unless hours are given): 2020-03-07 to 2020-03-09 (Международный женский день), 2020-04-30 09:00-13:00, 14:00-17:00 (Продолжительность работы сокращается на 1 час), 2020-05-01 to 2020-05-03 (Праздник Весны и Труда), 2020-05-04 to 2020-05-05 (Перенос с новогодних каникул), 2020-05-09 to 2020-05-11 (День Победы), 2020-06-12 to 2020-06-14 (День России).

## Resources

| Resource | Group | Rate | Cost per use |
| --- | --- | --- | --- |
| Ведущий программист | Программирование | 10 | 100 |
| Программист#1 | Программирование | 7 | 50 |
| Программист#2 | Программирование | 7 | 50 |
| Программист#3 | Программирование | 7 | 50 |
| Программист#4 | Программирование | 7 | 50 |
| Системный аналитик | Анализ | 20 | 300 |
| Художник-дизайнер | Дизайн | 8 | 70 |
| Технический писатель | Документация | 5 | 20 |
| Web-дизайнер | Internet | 7 | 50 |
| 3D аниматор | Дизайн | 9.2 | 70 |
| Мультимедиа-корреспондент | М-медиа | 3 | 20 |
| Наборщик данных#1 | Ввод данных | 2 | 10 |
| Наборщик данных#2 | Ввод данных | 2 | 10 |
| Наборщик данных#3 | Ввод данных | 2 | 10 |
| Наборщик данных#4 | Ввод данных | 2 | 10 |
| Наборщик данных#5 | Ввод данных | 2 | 10 |
| Дополнительный сервер |  | 2.1 |  |
| Программист#5 | Программирование | 7 | 50 |

## Schedule

| ID | WBS | Task | Type | Duration | Start | Finish | Predecessors | Complete | Remaining | Baseline start | Baseline finish | Baseline duration | Total slack | Free slack | Constraint | Resources | Work | Actual work | Cost | Baseline cost | Actual cost |
| --- | --- | --- | --- | --- | --- | --- | --- | --- | --- | --- | --- | --- | --- | --- | --- | --- | --- | --- | --- | --- | --- |
| 1 | 1 | **Проект ЛР1** |  | 131.55d | 2020-03-02 09:00 A | 2020-09-09 15:22 |  | 31% | 90.75d | 2020-03-02 09:00 | 2020-08-10 16:55 | 109.74d | 0d |  |  |  | 10084h | 2279.17h | 44,883.05 | 49,539.86 | 16,228.58 |
| 2 | 1.1 | Начало проекта | milestone | 0d | 2020-03-02 09:00 | 2020-03-02 09:00 |  |  |  | 2020-03-02 09:00 | 2020-03-02 09:00 | 0d | 0d |  |  |  |  |  |  |  |  |
| 3 | 1.2 | **Создание интерфейса** |  | 79.39d | 2020-03-02 09:00 A | 2020-06-29 14:05 | 2 | 84% | 12.53d | 2020-03-02 09:00 | 2020-06-26 14:55 | 78.49d | 26.28d |  |  |  | 560h | 320h | 5,768.8 | 5,894 | 3,728.8 |
| 4 | 1.2.1 | **Разработка дизайна интерфейса** |  | 25.62d | 2020-03-02 09:00 A | 2020-04-07 15:00 A |  | 100% |  | 2020-03-02 09:00 | 2020-04-07 15:00 | 25.62d |  |  |  |  | 320h | 320h | 2,888.8 | 2,770 | 2,888.8 |
| 5 | 1.2.1.1 | Разработка 2D графических элементов |  | 3w | 2020-03-02 09:00 A | 2020-03-24 12:00 A |  | 100% |  | 2020-03-02 09:00 | 2020-03-24 12:00 | 3w |  |  |  | Художник-дизайнер | 120h | 120h | 1,030 | 1,030 | 1,030 |
| 6 | 1.2.1.2 | Разработка 3D графических элементов |  | 2w | 2020-03-02 09:00 A | 2020-03-17 11:00 A | 5SS | 100% |  | 2020-03-02 09:00 | 2020-03-17 11:00 | 2w |  |  |  | 3D аниматор | 80h | 80h | 710 | 710 | 710 |
| 7 | 1.2.1.3 | Создание заставки |  | 3w | 2020-03-17 11:00 A | 2020-04-07 15:00 A | 6 | 100% |  | 2020-03-17 11:00 | 2020-04-07 15:00 | 3w |  |  |  | 3D аниматор | 120h | 120h | 1,148.8 | 1,030 | 1,148.8 |
| 8 | 1.2.2 | Программирование интерфейса |  | 1.5w | 2020-06-18 09:05 | 2020-06-29 14:05 | 4, 13 |  |  | 2020-06-18 12:55 | 2020-06-26 14:55 | 1.23w | 26.28d | 0d |  | Программист#3; Программист#4; Программист#2; Программист#5 | 240h |  | 1,880 | 2,124 |  |
| 9 | 1.3 | **Построение базы объектов** |  | 116.17d | 2020-03-24 12:00 A | 2020-09-09 15:22 |  | 28% | 84.15d | 2020-03-24 12:00 | 2020-07-29 18:00 | 86.5d | 0d |  |  | Дополнительный сервер | 6779.37h | 1520.18h | 18,035.77 | 15,638 | 6,343.89 |
| 10 | 1.3.1 | Анализ и построение структуры базы объектов |  | 2w | 2020-03-24 12:00 A | 2020-04-07 15:00 A |  | 100% |  | 2020-03-24 12:00 | 2020-04-07 15:00 | 2w |  |  |  | Системный аналитик | 80h | 80h | 1,900 | 1,900 | 1,900 |
| 11 | 1.3.2 | Программирование средств обработки объектов |  | 3.05w | 2020-04-07 15:00 A | 2020-06-17 15:22 | 10 | 89% | 0.35w | 2020-04-07 15:00 | 2020-04-29 17:00 | 3w | 0d |  |  | Программист#3; Программист#4 | 240h | 216h | 1,780 | 1,780 | 1,612 |
| 12 | 1.3.3 | Наполнение базы объектов |  | 12w | 2020-06-17 15:22 | 2020-09-09 15:22 | 11 |  |  | 2020-04-29 17:00 | 2020-07-29 18:00 | 12w | 0d |  |  | Наборщик данных#1; Наборщик данных#2; Наборщик данных#3; Наборщик данных#4; Наборщик данных#5 | 2400h |  | 4,850 | 4,850 |  |
| 13 | 1.4 | **Создание ядра GIS** |  | 71.89d | 2020-03-02 09:00 A | 2020-06-18 09:05 |  | 42% | 41.36d | 2020-03-02 09:00 | 2020-06-18 12:55 | 72.36d | 26.28d | 0d |  |  | 1634.26h | 380.98h | 13,758.05 | 18,288.86 | 5,656.89 |
| 14 | 1.4.1 | Анализ и проектирование ядра |  | 3w | 2020-03-02 09:00 A | 2020-03-24 12:00 A |  | 100% |  | 2020-03-02 09:00 | 2020-03-24 12:00 | 3w |  |  |  | Системный аналитик; Ведущий программист | 240h | 240h | 4,000 | 4,000 | 4,000 |
| 15 | 1.4.2 | Создание модели ядра |  | 3.06w | 2020-03-24 12:00 A | 2020-04-14 15:15 | 14 | 89% | 0.33w | 2020-03-24 12:00 | 2020-04-16 12:13 | 3.41w | 67.51d |  |  | Программист#2; Программист#5 | 122.26h | 108.98h | 905.83 | 3,396.7 | 812.89 |
| 16 | 1.4.3 | Тестирование модели ядра |  | 0.2w | 2020-04-16 12:13 A | 2020-04-17 12:13 A | 15 | 100% |  | 2020-04-16 12:13 | 2020-04-17 15:13 | 0.25w |  |  |  | Программист#2; Программист#3; Программист#4; Программист#5 | 32h | 32h | 424 | 480 | 424 |
| 17 | 1.4.4 | Создание рабочей версии ядра |  | 7.7w | 2020-04-17 12:13 | 2020-06-18 09:05 | 16 |  |  | 2020-04-17 15:13 | 2020-06-18 12:55 | 7.74w | 26.28d | 26.63d |  | Программист#2; Программист#3; Программист#4; Наборщик данных#5; Программист#5 | 1240h |  | 7,428.22 | 9,412.16 |  |
| 18 | 1.5 | Создание мультимедиа-наполнения |  | 6w | 2020-04-13 09:00 | 2020-05-29 18:00 | 4 |  |  | 2020-04-07 15:00 | 2020-05-26 15:00 | 6w | 83.49d | 84.36d | start no earlier than 2020-04-11 09:00 | Мультимедиа-корреспондент | 240h |  | 740 | 740 |  |
| 19 | 1.6 | Создание справочной системы |  | 2w | 2020-07-01 17:10 | 2020-07-22 16:05 | 8 |  |  | 2020-07-07 17:55 | 2020-07-22 10:55 | 2w | 34.91d |  |  | Технический писатель | 80h |  | 420 | 420 |  |
| 20 | 1.7 | **Создание руководства пользователя** |  | 27.62d | 2020-06-15 14:05 | 2020-07-23 10:05 | 8FS-10d |  |  | 2020-06-11 14:55 | 2020-07-07 17:55 | 17.38d | 26.28d |  |  |  | 160h |  | 1,010 | 1,010 |  |
| 21 | 1.7.1 | Разработка дизайна руководства |  | 1w | 2020-06-15 14:05 | 2020-06-22 15:05 |  |  |  | 2020-06-11 14:55 | 2020-06-19 15:55 | 1w | 26.28d | 0d |  | Художник-дизайнер | 40h |  | 390 | 390 |  |
| 22 | 1.7.2 | Написание руководства пользователя |  | 3w | 2020-06-17 14:05 | 2020-07-23 10:05 | 21SS+2d |  |  | 2020-06-16 14:55 | 2020-07-07 17:55 | 3w | 26.28d | 0d |  | Технический писатель | 120h |  | 620 | 620 |  |
| 23 | 1.8 | **Создание web-сайта и поддержка** |  | 23.6d | 2020-06-17 14:05 | 2020-07-21 09:55 |  |  |  | 2020-06-16 14:55 | 2020-07-20 11:55 | 23.75d | 26.28d | 0d |  |  | 248h |  | 2,154 | 2,106 |  |
| 24 | 1.8.1 | Разработка структуры сайта |  | 1d | 2020-06-17 14:05 | 2020-06-18 14:05 | 22SS |  |  | 2020-06-16 14:55 | 2020-06-17 15:55 | 1d | 26.28d | 0d |  | Web-дизайнер | 8h |  | 106 | 106 |  |
| 25 | 1.8.2 | Разработка дизайна сайта |  | 1.45w | 2020-06-18 14:05 | 2020-06-29 16:05 | 24 |  |  | 2020-06-17 15:55 | 2020-06-26 17:55 | 1.45w | 26.28d | 0d |  | Web-дизайнер; Художник-дизайнер; 3D аниматор | 120h |  | 1,158 | 1,110 |  |
| 26 | 1.8.3 | Наполнение сайта |  | 3w | 2020-06-29 16:05 | 2020-07-21 09:55 | 25 |  |  | 2020-06-26 17:55 | 2020-07-20 11:55 | 3w | 26.28d | 26.63d |  | Web-дизайнер | 120h |  | 890 | 890 |  |
| 27 | 1.9 | Тестирование сайта |  | 3.06w | 2020-07-14 09:55 | 2020-08-04 12:10 | 23FS-1w |  |  | 2020-07-13 11:55 | 2020-08-10 16:55 | 4.1w | 26.28d | 0d |  | Программист#1; Программист#2; Программист#5 | 241.49h |  | 1,790.43 | 4,040 |  |

Notes:
- 1: Команда разработчиков из 16 человек занимается созданием карты города на основе собственного модуля отображения. Проект должен быть завершён в течение 6 месяцев. Бюджет проекта 50000 рублей.

| ID | WBS | Task | Duration | Start | Finish | Predecessors | Complete | Baseline start | Baseline finish | Baseline duration | Total slack | Free slack | Constraint | Resources | Work | Actual work | Cost | Baseline cost | Actual cost |
| --- | --- | --- | --- | --- | --- | --- | --- | --- | --- | --- | --- | --- | --- | --- | --- | --- | --- | --- | --- |
| 28 | 1.10 | **Сдача сайта в эксплуатацию** | 0d | 2020-08-04 12:10 | 2020-08-04 12:10 | 27 |  | 2020-08-10 16:55 | 2020-08-10 16:55 | 0d | 26.28d | 26.63d |  |  |  |  |  |  |  |
| 30 | 1.10.1 | 1 | 1h | 2020-03-04 09:00 A | 2020-03-04 10:00 A |  | 100% | 2020-03-04 09:00 | 2020-03-04 10:00 | 1h |  |  | start no earlier than 2020-03-04 09:00 | 3D аниматор; Web-дизайнер; Ведущий программист; Мультимедиа-корреспондент; Системный аналитик; Технический писатель; Художник-дизайнер | 7h | 7h | 61 | 61 | 61 |
| 31 | 1.10.2 | 2 | 1h | 2020-03-11 09:00 A | 2020-03-11 10:00 A |  | 100% | 2020-03-11 09:00 | 2020-03-11 10:00 | 1h |  |  | start no earlier than 2020-03-11 09:00 | 3D аниматор; Web-дизайнер; Ведущий программист; Мультимедиа-корреспондент; Системный аналитик; Технический писатель; Художник-дизайнер | 7h | 7h | 61 | 61 | 61 |
| 32 | 1.10.3 | 3 | 1h | 2020-03-18 09:00 A | 2020-03-18 10:00 A |  | 100% | 2020-03-18 09:00 | 2020-03-18 10:00 | 1h |  |  | start no earlier than 2020-03-18 09:00 | 3D аниматор; Web-дизайнер; Ведущий программист; Мультимедиа-корреспондент; Системный аналитик; Технический писатель; Художник-дизайнер | 7h | 7h | 61 | 61 | 61 |
| 33 | 1.10.4 | 4 | 1h | 2020-03-25 09:00 A | 2020-03-25 10:00 A |  | 100% | 2020-03-25 09:00 | 2020-03-25 10:00 | 1h |  |  | start no earlier than 2020-03-25 09:00 | 3D аниматор; Web-дизайнер; Ведущий программист; Мультимедиа-корреспондент; Системный аналитик; Технический писатель; Художник-дизайнер | 7h | 7h | 61 | 61 | 61 |
| 34 | 1.10.5 | 5 | 1h | 2020-04-01 09:00 A | 2020-04-01 10:00 A |  | 100% | 2020-04-01 09:00 | 2020-04-01 10:00 | 1h |  |  | start no earlier than 2020-04-01 09:00 | 3D аниматор; Web-дизайнер; Мультимедиа-корреспондент; Системный аналитик; Технический писатель; Художник-дизайнер | 6h | 6h | 51 | 61 | 51 |
| 35 | 1.10.6 | 6 | 1h | 2020-04-08 09:00 A | 2020-04-08 10:00 A |  | 100% | 2020-04-08 09:00 | 2020-04-08 10:00 | 1h |  |  | start no earlier than 2020-04-08 09:00 | 3D аниматор; Web-дизайнер; Мультимедиа-корреспондент; Системный аналитик; Технический писатель; Художник-дизайнер | 6h | 6h | 51 | 61 | 51 |
| 36 | 1.10.7 | 7 | 1h | 2020-04-15 09:00 A | 2020-04-15 10:00 A |  | 100% | 2020-04-15 09:00 | 2020-04-15 10:00 | 1h |  |  | start no earlier than 2020-04-15 09:00 | 3D аниматор; Web-дизайнер; Мультимедиа-корреспондент; Системный аналитик; Технический писатель; Художник-дизайнер | 6h | 6h | 51 | 61 | 51 |
| 37 | 1.10.8 | 8 | 1h | 2020-04-22 09:00 A | 2020-04-22 10:00 A |  | 100% | 2020-04-22 09:00 | 2020-04-22 10:00 | 1h |  |  | start no earlier than 2020-04-22 09:00 | 3D аниматор; Web-дизайнер; Мультимедиа-корреспондент; Системный аналитик; Технический писатель; Художник-дизайнер | 6h | 6h | 51 | 61 | 51 |
| 38 | 1.10.9 | 9 | 1h | 2020-04-29 09:00 A | 2020-04-29 10:00 A |  | 100% | 2020-04-29 09:00 | 2020-04-29 10:00 | 1h |  |  | start no earlier than 2020-04-29 09:00 | 3D аниматор; Web-дизайнер; Мультимедиа-корреспондент; Системный аналитик; Технический писатель; Художник-дизайнер | 6h | 6h | 51 | 61 | 51 |
| 39 | 1.10.10 | 10 | 1h | 2020-05-06 09:00 | 2020-05-06 10:00 |  |  | 2020-05-06 09:00 | 2020-05-06 10:00 | 1h | 100.36d |  | start no earlier than 2020-05-06 09:00 | 3D аниматор; Web-дизайнер; Мультимедиа-корреспондент; Системный аналитик; Технический писатель; Художник-дизайнер | 6h |  | 51 | 61 |  |
| 40 | 1.10.11 | 11 | 1h | 2020-05-13 09:00 | 2020-05-13 10:00 |  |  | 2020-05-13 09:00 | 2020-05-13 10:00 | 1h | 96.36d |  | start no earlier than 2020-05-13 09:00 | 3D аниматор; Web-дизайнер; Мультимедиа-корреспондент; Системный аналитик; Технический писатель; Художник-дизайнер | 6h |  | 51 | 61 |  |
| 41 | 1.10.12 | 12 | 1h | 2020-05-20 09:00 | 2020-05-20 10:00 |  |  | 2020-05-20 09:00 | 2020-05-20 10:00 | 1h | 91.36d |  | start no earlier than 2020-05-20 09:00 | 3D аниматор; Web-дизайнер; Мультимедиа-корреспондент; Системный аналитик; Технический писатель; Художник-дизайнер | 6h |  | 51 | 61 |  |
| 42 | 1.10.13 | 13 | 1h | 2020-05-27 09:00 | 2020-05-27 10:00 |  |  | 2020-05-27 09:00 | 2020-05-27 10:00 | 1h | 86.36d |  | start no earlier than 2020-05-27 09:00 | 3D аниматор; Web-дизайнер; Мультимедиа-корреспондент; Системный аналитик; Технический писатель; Художник-дизайнер | 6h |  | 51 | 61 |  |
| 43 | 1.10.14 | 14 | 1h | 2020-06-03 09:00 | 2020-06-03 10:00 |  |  | 2020-06-03 09:00 | 2020-06-03 10:00 | 1h | 81.36d |  | start no earlier than 2020-06-03 09:00 | 3D аниматор; Web-дизайнер; Мультимедиа-корреспондент; Системный аналитик; Технический писатель; Художник-дизайнер | 6h |  | 51 | 61 |  |
| 44 | 1.10.15 | 15 | 1h | 2020-06-10 09:00 | 2020-06-10 10:00 |  |  | 2020-06-10 09:00 | 2020-06-10 10:00 | 1h | 76.36d |  | start no earlier than 2020-06-10 09:00 | 3D аниматор; Web-дизайнер; Мультимедиа-корреспондент; Системный аналитик; Технический писатель; Художник-дизайнер | 6h |  | 51 | 61 |  |
| 45 | 1.10.16 | 16 | 1h | 2020-06-17 09:00 | 2020-06-17 10:00 |  |  | 2020-06-17 09:00 | 2020-06-17 10:00 | 1h | 72.36d |  | start no earlier than 2020-06-17 09:00 | 3D аниматор; Web-дизайнер; Мультимедиа-корреспондент; Системный аналитик; Технический писатель; Художник-дизайнер | 6h |  | 51 | 61 |  |
| 46 | 1.10.17 | 17 | 1h | 2020-06-24 09:00 | 2020-06-24 10:00 |  |  | 2020-06-24 09:00 | 2020-06-24 10:00 | 1h | 67.36d |  | start no earlier than 2020-06-24 09:00 | 3D аниматор; Мультимедиа-корреспондент; Системный аналитик; Технический писатель; Художник-дизайнер | 5h |  | 44 | 61 |  |
| 47 | 1.10.18 | 18 | 1h | 2020-07-01 09:00 | 2020-07-01 10:00 |  |  | 2020-07-01 09:00 | 2020-07-01 10:00 | 1h | 62.36d |  | start no earlier than 2020-07-01 09:00 | 3D аниматор; Web-дизайнер; Мультимедиа-корреспондент; Системный аналитик; Технический писатель; Художник-дизайнер | 5.83h |  | 51 | 61 |  |
| 48 | 1.10.19 | 19 | 1h | 2020-07-08 09:00 | 2020-07-08 10:00 |  |  | 2020-07-08 09:00 | 2020-07-08 10:00 | 1h | 57.36d |  | start no earlier than 2020-07-08 09:00 | 3D аниматор; Web-дизайнер; Мультимедиа-корреспондент; Системный аналитик; Технический писатель; Художник-дизайнер | 6h |  | 51 | 61 |  |
| 49 | 1.10.20 | 20 | 1h | 2020-07-15 09:00 | 2020-07-15 10:00 |  |  | 2020-07-15 09:00 | 2020-07-15 10:00 | 1h | 52.36d |  | start no earlier than 2020-07-15 09:00 | 3D аниматор; Web-дизайнер; Мультимедиа-корреспондент; Системный аналитик; Технический писатель; Художник-дизайнер | 6h |  | 51 | 61 |  |
| 50 | 1.10.21 | 21 | 1h | 2020-07-22 09:00 | 2020-07-22 10:00 |  |  | 2020-07-22 09:00 | 2020-07-22 10:00 | 1h | 47.36d |  | start no earlier than 2020-07-22 09:00 | 3D аниматор; Web-дизайнер; Мультимедиа-корреспондент; Системный аналитик; Технический писатель; Художник-дизайнер | 6h |  | 51 | 61 |  |
| 51 | 1.10.22 | 22 | 1h | 2020-07-29 09:00 | 2020-07-29 10:00 |  |  | 2020-07-29 09:00 | 2020-07-29 10:00 | 1h | 42.36d |  | start no earlier than 2020-07-29 09:00 | 3D аниматор; Web-дизайнер; Мультимедиа-корреспондент; Системный аналитик; Технический писатель; Художник-дизайнер | 6h |  | 51 | 61 |  |
| 52 | 1.10.23 | 23 | 1h | 2020-08-05 09:00 | 2020-08-05 10:00 |  |  | 2020-08-05 09:00 | 2020-08-05 10:00 | 1h | 25.55d | 0d | start no earlier than 2020-08-05 09:00 | 3D аниматор; Web-дизайнер; Мультимедиа-корреспондент; Системный аналитик; Технический писатель; Художник-дизайнер | 6h |  | 51 | 61 |  |
