Schedule from MS Project, 2020-03-02 to 2020-08-27, status date 2020-04-30, costs in ₽, A marks actual dates.

## Calendars

- Стандартный: Mon-Fri 09:00-13:00, 14:00-18:00; Sat-Sun off. Exceptions (off unless hours are given): 2020-03-07 to 2020-03-09 (Международный женский день), 2020-04-30 09:00-13:00, 14:00-17:00 (Продолжительность работы сокращается на 1 час), 2020-05-01 to 2020-05-03 (Праздник Весны и Труда), 2020-05-04 to 2020-05-05 (Перенос с новогодних каникул), 2020-05-09 to 2020-05-11 (День Победы), 2020-06-12 to 2020-06-14 (День России).

## Resources

| Resource | Group | Rate | Cost per use |
| --- | --- | --- | --- |
| Ведущий программист | Программирование | 10 | 100 |
| Программист#1 | Программирование | 7 | 50 |
| Программист#2 | Программирование | 7 | 50 |
| Программист#3 | Программирование | 7 | 50 |
| Программист#4 | Программирование | 7 | 50 |
| Системный аналитик | Анализ | 20 | 300 |
| Художник-дизайнер | Дизайн | 8 | 70 |
| Технический писатель | Документация | 5 | 20 |
| Web-дизайнер | Internet | 7 | 50 |
| 3D аниматор | Дизайн | 9.2 | 70 |
| Мультимедиа-корреспондент | М-медиа | 3 | 20 |
| Наборщик данных#1 | Ввод данных | 2 | 10 |
| Наборщик данных#2 | Ввод данных | 2 | 10 |
| Наборщик данных#3 | Ввод данных | 2 | 10 |
| Наборщик данных#4 | Ввод данных | 2 | 10 |
| Наборщик данных#5 | Ввод данных | 2 | 10 |
| Дополнительный сервер |  | 2.1 |  |
| Программист#5 | Программирование | 7 | 50 |

## Schedule

| ID | WBS | Task | Type | Duration | Start | Finish | Predecessors | Complete | Remaining | Baseline start | Baseline finish | Baseline duration | Total slack | Free slack | Constraint | Resources | Work | Actual work | Cost | Baseline cost | Actual cost |
| --- | --- | --- | --- | --- | --- | --- | --- | --- | --- | --- | --- | --- | --- | --- | --- | --- | --- | --- | --- | --- | --- |
| 1 | 1 | **Проект ЛР1** |  | 122.17d | 2020-03-02 09:00 A | 2020-08-27 11:21 |  | 26% | 90.35d | 2020-03-02 09:00 | 2020-08-10 16:55 | 109.74d | 0d |  |  |  | 9428.95h | 2279.17h | 43,526.41 | 49,539.86 | 15,937.48 |
| 2 | 1.1 | Начало проекта | milestone | 0d | 2020-03-02 09:00 | 2020-03-02 09:00 |  |  |  | 2020-03-02 09:00 | 2020-03-02 09:00 | 0d | 0d |  |  |  |  |  |  |  |  |
| 3 | 1.2 | **Разработка** |  | 122.17d | 2020-03-02 09:00 A | 2020-08-27 11:21 |  | 30% | 85.84d |  |  |  | 0d |  |  |  | 8118.62h | 1901.17h | 31,195.98 |  | 9,538.48 |
| 4 | 1.2.1 | Сдача сайта в эксплуатацию | milestone | 0d | 2020-07-20 16:20 | 2020-07-20 16:20 | 33 |  |  | 2020-08-10 16:55 | 2020-08-10 16:55 | 0d | 27.5d | 11.33d |  |  |  |  |  |  |  |
| 5 | 1.2.2 | **Построение базы объектов** |  | 96.55d | 2020-04-07 15:00 A | 2020-08-27 11:21 |  | 12% | 84.89d | 2020-03-24 12:00 | 2020-07-29 18:00 | 86.5d | 0d |  |  | Дополнительный сервер | 6044.36h | 1440.18h | 14,779.14 | 15,638 | 4,302.78 |
| 6 | 1.2.2.1 | Программирование средств обработки объектов |  | 3.05w | 2020-04-07 15:00 A | 2020-06-17 15:22 | 22 | 89% | 0.35w | 2020-04-07 15:00 | 2020-04-29 17:00 | 3w | 50.62d |  |  | Программист#3; Программист#4 | 240h | 216h | 1,780 | 1,780 | 1,612 |
| 7 | 1.2.2.2 | Наполнение базы объектов |  | 19.31w | 2020-04-07 15:00 | 2020-08-27 11:21 | 22 |  |  | 2020-04-29 17:00 | 2020-07-29 18:00 | 12w | 0d |  |  | Наборщик данных#1; Наборщик данных#2; Наборщик данных#3; Наборщик данных#4; Наборщик данных#5 | 2400h |  | 4,850 | 4,850 |  |
| 8 | 1.2.3 | **Создание интерфейса** |  | 79.39d | 2020-03-02 09:00 A | 2020-06-29 14:05 | 2 | 84% | 12.53d | 2020-03-02 09:00 | 2020-06-26 14:55 | 78.49d | 27.16d | 10.99d |  |  | 560h | 320h | 5,768.8 | 5,894 | 3,728.8 |
| 9 | 1.2.3.1 | **Разработка дизайна интерфейса** |  | 25.62d | 2020-03-02 09:00 A | 2020-04-07 15:00 A |  | 100% |  | 2020-03-02 09:00 | 2020-04-07 15:00 | 25.62d |  |  |  |  | 320h | 320h | 2,888.8 | 2,770 | 2,888.8 |
| 10 | 1.2.3.1.1 | Разработка 2D графических элементов |  | 3w | 2020-03-02 09:00 A | 2020-03-24 12:00 A |  | 100% |  | 2020-03-02 09:00 | 2020-03-24 12:00 | 3w |  |  |  | Художник-дизайнер | 120h | 120h | 1,030 | 1,030 | 1,030 |
| 11 | 1.2.3.1.2 | Разработка 3D графических элементов |  | 2w | 2020-03-02 09:00 A | 2020-03-17 11:00 A | 10SS | 100% |  | 2020-03-02 09:00 | 2020-03-17 11:00 | 2w |  |  |  | 3D аниматор | 80h | 80h | 710 | 710 | 710 |
| 12 | 1.2.3.1.3 | Создание заставки |  | 3w | 2020-03-17 11:00 A | 2020-04-07 15:00 A | 11 | 100% |  | 2020-03-17 11:00 | 2020-04-07 15:00 | 3w |  |  |  | 3D аниматор | 120h | 120h | 1,148.8 | 1,030 | 1,148.8 |
| 13 | 1.2.3.2 | Программирование интерфейса |  | 1.5w | 2020-06-18 09:05 | 2020-06-29 14:05 | 9, 14 |  |  | 2020-06-18 12:55 | 2020-06-26 14:55 | 1.23w | 27.16d | 0d |  | Программист#3; Программист#4; Программист#2; Программист#5 | 240h |  | 1,880 | 2,124 |  |
| 14 | 1.2.4 | **Создание ядра GIS** |  | 56.51d | 2020-03-24 12:00 A | 2020-06-18 09:05 |  | 27% | 41.42d | 2020-03-02 09:00 | 2020-06-18 12:55 | 72.36d | 27.16d | 0d |  |  | 1394.26h | 140.98h | 9,758.05 | 18,288.86 | 1,506.89 |
| 15 | 1.2.4.1 | Создание модели ядра |  | 3.06w | 2020-03-24 12:00 A | 2020-04-14 15:15 | 21 | 89% | 0.33w | 2020-03-24 12:00 | 2020-04-16 12:13 | 3.41w | 68.39d | 52.22d |  | Программист#2; Программист#5 | 122.26h | 108.98h | 905.83 | 3,396.7 | 812.89 |
| 16 | 1.2.4.2 | Тестирование модели ядра |  | 0.2w | 2020-04-16 12:13 A | 2020-04-17 12:13 A | 15 | 100% |  | 2020-04-16 12:13 | 2020-04-17 15:13 | 0.25w |  |  |  | Программист#2; Программист#3; Программист#4; Программист#5 | 32h | 32h | 424 | 480 | 424 |
| 17 | 1.2.4.3 | Создание рабочей версии ядра |  | 7.7w | 2020-04-17 12:13 | 2020-06-18 09:05 | 16 |  |  | 2020-04-17 15:13 | 2020-06-18 12:55 | 7.74w | 27.16d | 10.99d |  | Программист#2; Программист#3; Программист#4; Наборщик данных#5; Программист#5 | 1240h |  | 7,428.22 | 9,412.16 |  |
| 18 | 1.2.5 | **Создание web-сайта и поддержка** |  | 15.5d | 2020-04-14 16:00 | 2020-05-12 12:00 |  |  |  | 2020-06-16 14:55 | 2020-07-20 11:55 | 23.75d | 27.5d | 0d |  |  | 120h |  | 890 | 2,106 |  |
| 19 | 1.2.5.1 | Наполнение сайта |  | 3w | 2020-04-14 16:00 | 2020-05-12 12:00 | 25 |  |  | 2020-06-26 17:55 | 2020-07-20 11:55 | 3w | 27.5d | 11.33d |  | Web-дизайнер | 120h |  | 890 | 890 |  |
| 20 | 1.3 | **Анализ** |  | 25.62d | 2020-03-02 09:00 A | 2020-04-07 15:00 A |  | 100% |  |  |  |  |  |  |  |  | 320h | 320h | 5,900 |  | 5,900 |
| 21 | 1.3.1 | Анализ и проектирование ядра |  | 3w | 2020-03-02 09:00 A | 2020-03-24 12:00 A |  | 100% |  | 2020-03-02 09:00 | 2020-03-24 12:00 | 3w |  |  |  | Системный аналитик; Ведущий программист | 240h | 240h | 4,000 | 4,000 | 4,000 |
| 22 | 1.3.2 | Анализ и построение структуры базы объектов |  | 2w | 2020-03-24 12:00 A | 2020-04-07 15:00 A |  | 100% |  | 2020-03-24 12:00 | 2020-04-07 15:00 | 2w |  |  |  | Системный аналитик | 80h | 80h | 1,900 | 1,900 | 1,900 |
| 23 | 1.4 | **Дизайн** |  | 59.88d | 2020-03-02 09:00 | 2020-05-29 18:00 |  |  |  |  |  |  | 27.5d | 11.33d |  |  | 408h |  | 2,394 |  |  |
| 24 | 1.4.1 | Разработка структуры сайта |  | 1d | 2020-03-02 09:00 | 2020-03-02 18:00 |  |  |  | 2020-06-16 14:55 | 2020-06-17 15:55 | 1d | 27.5d | 0d |  | Web-дизайнер | 8h |  | 106 | 106 |  |
| 25 | 1.4.2 | Разработка дизайна сайта |  | 3w | 2020-03-03 09:00 | 2020-04-14 16:00 | 24 |  |  | 2020-06-17 15:55 | 2020-06-26 17:55 | 1.45w | 27.5d | 0d |  | Web-дизайнер; Художник-дизайнер; 3D аниматор | 120h |  | 1,158 | 1,110 |  |
| 26 | 1.4.3 | Разработка дизайна руководства |  | 1w | 2020-03-24 12:00 | 2020-03-31 13:00 |  |  |  | 2020-06-11 14:55 | 2020-06-19 15:55 | 1w | 79.17d | 52.01d |  | Художник-дизайнер | 40h |  | 390 | 390 |  |
| 27 | 1.4.4 | Создание мультимедиа-наполнения |  | 6w | 2020-04-13 09:00 | 2020-05-29 18:00 | 9 |  |  | 2020-04-07 15:00 | 2020-05-26 15:00 | 6w | 62.3d | 46.12d | start no earlier than 2020-04-11 09:00 | Мультимедиа-корреспондент | 240h |  | 740 | 740 |  |

Notes:
- 1: Команда разработчиков из 16 человек занимается созданием карты города на основе собственного модуля отображения. Проект должен быть завершён в течение 6 месяцев. Бюджет проекта 50000 рублей.

| ID | WBS | Task | Duration | Start | Finish | Predecessors | Complete | Baseline start | Baseline finish | Baseline duration | Total slack | Free slack | Constraint | Resources | Work | Actual work | Cost | Baseline cost | Actual cost |
| --- | --- | --- | --- | --- | --- | --- | --- | --- | --- | --- | --- | --- | --- | --- | --- | --- | --- | --- | --- |
| 28 | 1.5 | **Документация** | 25.62d | 2020-06-15 14:05 | 2020-07-21 10:05 |  |  |  |  |  | 27.16d | 10.99d |  |  | 200h |  | 1,040 |  |  |
| 29 | 1.5.1 | Создание справочной системы | 2w | 2020-06-29 17:10 | 2020-07-20 16:05 | 13 |  | 2020-07-07 17:55 | 2020-07-22 10:55 | 2w | 27.53d | 11.36d |  | Технический писатель | 80h |  | 420 | 420 |  |
| 30 | 1.5.2 | **Создание руководства пользователя** | 25.62d | 2020-06-15 14:05 | 2020-07-21 10:05 | 13FS-10d |  | 2020-06-11 14:55 | 2020-07-07 17:55 | 17.38d | 27.16d | 10.99d |  |  | 120h |  | 620 | 1,010 |  |
| 31 | 1.5.2.1 | Написание руководства пользователя | 3w | 2020-06-15 14:05 | 2020-07-21 10:05 | 26SS+2d |  | 2020-06-16 14:55 | 2020-07-07 17:55 | 3w | 27.16d | 10.99d |  | Технический писатель | 120h |  | 620 | 620 |  |
| 32 | 1.6 | **Тестирование** | 53.42d | 2020-04-29 11:00 | 2020-07-20 16:20 |  |  |  |  |  | 27.5d | 11.33d |  |  | 241.49h |  | 1,790.43 |  |  |
| 33 | 1.6.1 | Тестирование сайта | 5.79w | 2020-04-29 11:00 | 2020-07-20 16:20 | 18FS-1w |  | 2020-07-13 11:55 | 2020-08-10 16:55 | 4.1w | 27.5d | 0d |  | Программист#1; Программист#2; Программист#5 | 241.49h |  | 1,790.43 | 4,040 |  |
| 35 | 1.6.2 | 1 | 1h | 2020-03-04 09:00 A | 2020-03-04 10:00 A |  | 100% | 2020-03-04 09:00 | 2020-03-04 10:00 | 1h |  |  | start no earlier than 2020-03-04 09:00 | 3D аниматор; Web-дизайнер; Ведущий программист; Мультимедиа-корреспондент; Системный аналитик; Технический писатель; Художник-дизайнер | 7h | 7h | 61 | 61 | 61 |
| 36 | 1.6.3 | 2 | 1h | 2020-03-11 09:00 A | 2020-03-11 10:00 A |  | 100% | 2020-03-11 09:00 | 2020-03-11 10:00 | 1h |  |  | start no earlier than 2020-03-11 09:00 | 3D аниматор; Web-дизайнер; Ведущий программист; Мультимедиа-корреспондент; Системный аналитик; Технический писатель; Художник-дизайнер | 7h | 7h | 61 | 61 | 61 |
| 37 | 1.6.4 | 3 | 1h | 2020-03-18 09:00 A | 2020-03-18 10:00 A |  | 100% | 2020-03-18 09:00 | 2020-03-18 10:00 | 1h |  |  | start no earlier than 2020-03-18 09:00 | 3D аниматор; Web-дизайнер; Ведущий программист; Мультимедиа-корреспондент; Системный аналитик; Технический писатель; Художник-дизайнер | 7h | 7h | 61 | 61 | 61 |
| 38 | 1.6.5 | 4 | 1h | 2020-03-25 09:00 A | 2020-03-25 10:00 A |  | 100% | 2020-03-25 09:00 | 2020-03-25 10:00 | 1h |  |  | start no earlier than 2020-03-25 09:00 | 3D аниматор; Web-дизайнер; Ведущий программист; Мультимедиа-корреспондент; Системный аналитик; Технический писатель; Художник-дизайнер | 7h | 7h | 61 | 61 | 61 |
| 39 | 1.6.6 | 5 | 1h | 2020-04-01 09:00 A | 2020-04-01 10:00 A |  | 100% | 2020-04-01 09:00 | 2020-04-01 10:00 | 1h |  |  | start no earlier than 2020-04-01 09:00 | 3D аниматор; Web-дизайнер; Мультимедиа-корреспондент; Системный аналитик; Технический писатель; Художник-дизайнер | 6h | 6h | 51 | 61 | 51 |
| 40 | 1.6.7 | 6 | 1h | 2020-04-08 09:00 A | 2020-04-08 10:00 A |  | 100% | 2020-04-08 09:00 | 2020-04-08 10:00 | 1h |  |  | start no earlier than 2020-04-08 09:00 | 3D аниматор; Web-дизайнер; Мультимедиа-корреспондент; Системный аналитик; Технический писатель; Художник-дизайнер | 6h | 6h | 51 | 61 | 51 |
| 41 | 1.6.8 | 7 | 1h | 2020-04-15 09:00 A | 2020-04-15 10:00 A |  | 100% | 2020-04-15 09:00 | 2020-04-15 10:00 | 1h |  |  | start no earlier than 2020-04-15 09:00 | 3D аниматор; Web-дизайнер; Мультимедиа-корреспондент; Системный аналитик; Технический писатель; Художник-дизайнер | 6h | 6h | 51 | 61 | 51 |
| 42 | 1.6.9 | 8 | 1h | 2020-04-22 09:00 A | 2020-04-22 10:00 A |  | 100% | 2020-04-22 09:00 | 2020-04-22 10:00 | 1h |  |  | start no earlier than 2020-04-22 09:00 | 3D аниматор; Web-дизайнер; Мультимедиа-корреспондент; Системный аналитик; Технический писатель; Художник-дизайнер | 6h | 6h | 51 | 61 | 51 |
| 43 | 1.6.10 | 9 | 1h | 2020-04-29 09:00 A | 2020-04-29 10:00 A |  | 100% | 2020-04-29 09:00 | 2020-04-29 10:00 | 1h |  |  | start no earlier than 2020-04-29 09:00 | 3D аниматор; Web-дизайнер; Мультимедиа-корреспондент; Системный аналитик; Технический писатель; Художник-дизайнер | 6h | 6h | 51 | 61 | 51 |
| 44 | 1.6.11 | 10 | 1h | 2020-05-06 09:00 | 2020-05-06 10:00 |  |  | 2020-05-06 09:00 | 2020-05-06 10:00 | 1h | 79.17d | 63d | start no earlier than 2020-05-06 09:00 | 3D аниматор; Web-дизайнер; Мультимедиа-корреспондент; Системный аналитик; Технический писатель; Художник-дизайнер | 6h |  | 51 | 61 |  |
| 45 | 1.6.12 | 11 | 1h | 2020-05-13 09:00 | 2020-05-13 10:00 |  |  | 2020-05-13 09:00 | 2020-05-13 10:00 | 1h | 75.17d | 59d | start no earlier than 2020-05-13 09:00 | 3D аниматор; Web-дизайнер; Мультимедиа-корреспондент; Системный аналитик; Технический писатель; Художник-дизайнер | 6h |  | 51 | 61 |  |
| 46 | 1.6.13 | 12 | 1h | 2020-05-20 09:00 | 2020-05-20 10:00 |  |  | 2020-05-20 09:00 | 2020-05-20 10:00 | 1h | 70.17d | 54d | start no earlier than 2020-05-20 09:00 | 3D аниматор; Web-дизайнер; Мультимедиа-корреспондент; Системный аналитик; Технический писатель; Художник-дизайнер | 6h |  | 51 | 61 |  |
| 47 | 1.6.14 | 13 | 1h | 2020-05-27 09:00 | 2020-05-27 10:00 |  |  | 2020-05-27 09:00 | 2020-05-27 10:00 | 1h | 65.17d | 49d | start no earlier than 2020-05-27 09:00 | 3D аниматор; Web-дизайнер; Мультимедиа-корреспондент; Системный аналитик; Технический писатель; Художник-дизайнер | 6h |  | 51 | 61 |  |
| 48 | 1.6.15 | 14 | 1h | 2020-06-03 09:00 | 2020-06-03 10:00 |  |  | 2020-06-03 09:00 | 2020-06-03 10:00 | 1h | 60.17d | 44d | start no earlier than 2020-06-03 09:00 | 3D аниматор; Web-дизайнер; Мультимедиа-корреспондент; Системный аналитик; Технический писатель; Художник-дизайнер | 6h |  | 51 | 61 |  |
| 49 | 1.6.16 | 15 | 1h | 2020-06-10 09:00 | 2020-06-10 10:00 |  |  | 2020-06-10 09:00 | 2020-06-10 10:00 | 1h | 55.17d | 39d | start no earlier than 2020-06-10 09:00 | 3D аниматор; Web-дизайнер; Мультимедиа-корреспондент; Системный аналитик; Технический писатель; Художник-дизайнер | 6h |  | 51 | 61 |  |
| 50 | 1.6.17 | 16 | 1h | 2020-06-17 09:00 | 2020-06-17 10:00 |  |  | 2020-06-17 09:00 | 2020-06-17 10:00 | 1h | 51.17d | 35d | start no earlier than 2020-06-17 09:00 | 3D аниматор; Web-дизайнер; Мультимедиа-корреспондент; Системный аналитик; Технический писатель; Художник-дизайнер | 6h |  | 51 | 61 |  |
| 51 | 1.6.18 | 17 | 1h | 2020-06-24 09:00 | 2020-06-24 10:00 |  |  | 2020-06-24 09:00 | 2020-06-24 10:00 | 1h | 46.17d | 30d | start no earlier than 2020-06-24 09:00 | 3D аниматор; Мультимедиа-корреспондент; Системный аналитик; Технический писатель; Художник-дизайнер | 5h |  | 44 | 61 |  |
| 52 | 1.6.19 | 18 | 1h | 2020-07-01 09:00 | 2020-07-01 10:00 |  |  | 2020-07-01 09:00 | 2020-07-01 10:00 | 1h | 41.17d | 25d | start no earlier than 2020-07-01 09:00 | 3D аниматор; Web-дизайнер; Мультимедиа-корреспондент; Системный аналитик; Технический писатель; Художник-дизайнер | 5.83h |  | 51 | 61 |  |
| 53 | 1.6.20 | 19 | 1h | 2020-07-08 09:00 | 2020-07-08 10:00 |  |  | 2020-07-08 09:00 | 2020-07-08 10:00 | 1h | 36.17d | 20d | start no earlier than 2020-07-08 09:00 | 3D аниматор; Web-дизайнер; Мультимедиа-корреспондент; Системный аналитик; Технический писатель; Художник-дизайнер | 6h |  | 51 | 61 |  |
| 54 | 1.6.21 | 20 | 1h | 2020-07-15 09:00 | 2020-07-15 10:00 |  |  | 2020-07-15 09:00 | 2020-07-15 10:00 | 1h | 31.17d | 15d | start no earlier than 2020-07-15 09:00 | 3D аниматор; Web-дизайнер; Мультимедиа-корреспондент; Системный аналитик; Технический писатель; Художник-дизайнер | 6h |  | 51 | 61 |  |
| 55 | 1.6.22 | 21 | 1h | 2020-07-22 09:00 | 2020-07-22 10:00 |  |  | 2020-07-22 09:00 | 2020-07-22 10:00 | 1h | 26.17d | 10d | start no earlier than 2020-07-22 09:00 | 3D аниматор; Web-дизайнер; Мультимедиа-корреспондент; Системный аналитик; Технический писатель; Художник-дизайнер | 6h |  | 51 | 61 |  |
| 56 | 1.6.23 | 22 | 1h | 2020-07-29 09:00 | 2020-07-29 10:00 |  |  | 2020-07-29 09:00 | 2020-07-29 10:00 | 1h | 21.17d | 5d | start no earlier than 2020-07-29 09:00 | 3D аниматор; Web-дизайнер; Мультимедиа-корреспондент; Системный аналитик; Технический писатель; Художник-дизайнер | 6h |  | 51 | 61 |  |
| 57 | 1.6.24 | 23 | 1h | 2020-08-05 09:00 | 2020-08-05 10:00 |  |  | 2020-08-05 09:00 | 2020-08-05 10:00 | 1h | 16.17d | 0d | start no earlier than 2020-08-05 09:00 | 3D аниматор; Web-дизайнер; Мультимедиа-корреспондент; Системный аналитик; Технический писатель; Художник-дизайнер | 6h |  | 51 | 61 |  |
